Schedule from MS Project, 2009-04-08 to 2009-04-30, A marks actual dates.

## Calendars

- 标准: Mon-Fri 08:00-12:00, 13:00-17:00; Sat-Sun off.

## Resources

| Resource |
| --- |
| 徐旭 |
| 高总 |
| 周总 |
| 丁总 |
| 王涛 |
| 廖志强 |
| 孙立华 |
| 程天飞 |
| 谢恋 |
| 公司内部部 |
| 田浩 |
| 公司内控部 |

## Schedule

| ID | Task | Duration | Start | Finish | Predecessors | Complete | Total slack | Free slack | Constraint | Resources | Work | Actual work |
| --- | --- | --- | --- | --- | --- | --- | --- | --- | --- | --- | --- | --- |
| 1 | 制定项目工作计划 | 1d | 2009-04-08 A | 2009-04-08 A |  | 100% |  |  | start no earlier than 2009-04-08 | 徐旭 | 8h | 8h |
| 2 | 评审工作计划 | 1d | 2009-04-09 A | 2009-04-09 A | 1 | 100% |  |  | start no earlier than 2009-04-09 | 高总; 周总; 丁总; 王涛; 廖志强 | 40h | 40h |
| 3 | 编制PROJECT项目计划 | 1d? | 2009-04-10 A | 2009-04-10 A | 2 | 100% |  |  | start no earlier than 2009-04-10 | 徐旭 | 8h | 8h |
| 4 | 获取资料 | 1d | 2009-04-13 A | 2009-04-13 A | 3 | 100% |  |  | start no earlier than 2009-04-10 | 公司内控部 | 8h | 8h |
| 5 | 细化工作计划，形成任务包 | 0.5d | 2009-04-10 A | 2009-04-10 A | 4 | 100% |  |  |  | 徐旭; 孙立华; 程天飞; 谢恋 | 16h | 16h |
| 6 | 系统质量诊断模板定义 | 1d | 2009-04-13 | 2009-04-13 |  |  | 13d |  | start no earlier than 2009-04-13 | 孙立华 | 8h |  |
| 7 | 获取软件包 | 0.5d | 2009-04-14 | 2009-04-14 |  |  | 12.5d |  | start no earlier than 2009-04-14 | 廖志强 | 4h |  |
| 8 | 服务器到位 | 1d | 2009-04-14 | 2009-04-14 |  |  | 7d | 0d | start no earlier than 2009-04-14 | 田浩 | 8h |  |
| 9 | 应用环境安装 | 2d | 2009-04-15 | 2009-04-16 | 8 |  | 7d | 0d | finish no earlier than 2009-04-15 | 孙立华; 程天飞; 廖志强 [50%] | 40h |  |
| 10 | 编制需求跟踪模板 | 1d | 2009-04-10 | 2009-04-10 |  |  | 13.5d | 0d | start no earlier than 2009-04-10 | 孙立华 | 8h |  |
| 11 | 需求跟踪模板检查 | 0.5d | 2009-04-13 | 2009-04-13 | 10 |  | 13.5d |  | start no earlier than 2009-04-11 | 徐旭; 程天飞 | 8h |  |
| 12 | 项目共享环境建立及培训 | 0.5d | 2009-04-10 A | 2009-04-10 A |  | 100% |  |  | start no earlier than 2009-04-10 | 孙立华 | 4h | 4h |
| 13 | 建立从IT设计到需求规格说明书的跟踪矩阵 | 3d | 2009-04-14 | 2009-04-16 | 4 |  | 8d | 0d | finish no earlier than 2009-04-15 | 孙立华 | 24h |  |
| 14 | 建立从需求规格说明书到系统功能实现的跟踪矩阵 | 2d | 2009-04-13 | 2009-04-14 |  |  | 9d | 2d | start no earlier than 2009-04-13 | 程天飞 | 16h |  |
| 15 | 检查孙立华工作成果 | 2d? | 2009-04-17 | 2009-04-20 | 13 |  | 8d |  | start no earlier than 2009-04-16 | 徐旭; 程天飞; 廖志强 | 48h |  |
| 16 | 检查程天飞工作成果 | 3d? | 2009-04-17 | 2009-04-21 | 14, 9 |  | 7d |  | start no earlier than 2009-04-15 | 徐旭; 孙立华; 廖志强 | 72h |  |
| 17 | 系统应用诊断模板 | 1d | 2009-04-17 | 2009-04-17 | 9 |  | 7d | 0d |  | 孙立华 | 8h |  |
| 18 | 给出系统应用初始意见 | 2d? | 2009-04-20 | 2009-04-21 | 17 |  | 7d |  | start no earlier than 2009-04-17 | 程天飞 | 16h |  |
| 19 | 给出系统适应性初始意见 | 6d? | 2009-04-13 | 2009-04-20 |  |  | 8d |  | start no earlier than 2009-04-13 | 程天飞 | 48h |  |
| 20 | 任务完成情况检查 | 15d | 2009-04-10 | 2009-04-30 |  |  | 0d |  | start no earlier than 2009-04-10 | 谢恋 | 120h |  |
